# P3MC Mobilisation Plan

Schedule from MS Project, 2024-10-21 to 2025-01-23, costs in £, A marks actual dates.

## Calendars

- Standard: Mon-Fri 08:00-12:00, 13:00-17:00; Sat-Sun off.

## Resources

| Resource | Rate |
| --- | --- |
| P3MC SME 1 | 62.5 |
| P3MC SME 2 | 62.5 |
| P3MC SME3 | 62.5 |
| P3MC SME4 | 62.5 |
| Client Sponsor | 62.5 |

## Schedule

| ID | WBS | Task | Type | Duration | Start | Finish | Predecessors | Complete | Total slack | Free slack | Resources | Work | Cost |
| --- | --- | --- | --- | --- | --- | --- | --- | --- | --- | --- | --- | --- | --- |
| 1 | 1 | P3MC 30 Day Plan Start | milestone | 0d | 2024-10-21 A | 2024-10-21 A |  | 100% |  |  |  |  |  |
| 2 | 2 | **P3MC 0-30 Day Plan** |  | 22.8d | 2024-10-21 | 2024-11-20 |  |  | 0d |  |  | 680h | 42,500 |
| 3 | 2.1 | **People** |  | 21.8d | 2024-10-21 | 2024-11-19 |  |  | 0d |  |  | 192h | 12,000 |
| 4 | 2.1.1 | Engage Key Sponsors & Stakeholders |  | 9.5d | 2024-10-21 | 2024-11-01 | 1 |  | 0d |  | P3MC SME 1 [25%]; P3MC SME 2 [25%]; P3MC SME3 [25%]; P3MC SME4 [25%] | 80h | 5,000 |
| 5 | 2.1.2 | OUTCOME: Stakeholder expectations & relationship map first Draft for Review | milestone | 0d | 2024-10-25 | 2024-10-25 | 4FS-5d |  | 0d |  | Client Sponsor |  |  |
| 6 | 2.1.3 | OUTCOME: Stakeholder expectations & relationship map FINAL Version Sign Off | milestone | 0d | 2024-11-01 | 2024-11-01 | 4 |  | 1d | 0d | Client Sponsor |  |  |
| 7 | 2.1.4 | Analyse team roles and value contribution |  | 4.75d | 2024-11-01 | 2024-11-08 | 6 |  | 1d | 0d | P3MC SME3 [25%]; P3MC SME4 [25%]; P3MC SME 1 [25%]; P3MC SME 2 [25%] | 40h | 2,500 |
| 8 | 2.1.5 | OUTCOME:Engagement organisation design & structure First DRAFT for Review | milestone | 0d | 2024-11-06 | 2024-11-06 | 7FS-2d |  | 10.55d | 0d | Client Sponsor |  |  |
| 9 | 2.1.6 | OUTCOME:Engagement organisation design & structure FINAL Version for Sign Off | milestone | 0d | 2024-11-06 | 2024-11-06 | 8, 6 |  | 10.55d |  | Client Sponsor |  |  |
| 10 | 2.1.7 | Understand perceived pain points & decision making maturity |  | 3.8d | 2024-11-08 | 2024-11-14 | 7 |  | 1d | 0d | P3MC SME 1 [25%]; P3MC SME3 [25%]; P3MC SME4 [25%]; P3MC SME 2 [25%] | 32h | 2,000 |
| 11 | 2.1.8 | OUTCOME: PMO structure aligned to org structure DRAFT for Review | milestone | 0d | 2024-11-13 | 2024-11-13 | 10FS-1d |  | 1d | 0d | Client Sponsor |  |  |
| 12 | 2.1.9 | OUTCOME: PMO structure aligned to org structure FINAL Version for Sign Off | milestone | 0d | 2024-11-13 | 2024-11-13 | 11, 7 |  | 1d | 0d | Client Sponsor |  |  |
| 13 | 2.1.10 | Initiate functional relationships within the engagement team (PMs SMEs etc.) |  | 3.8d | 2024-11-13 | 2024-11-18 | 12 |  | 1d | 0d | P3MC SME3 [25%]; P3MC SME4 [25%]; P3MC SME 1 [25%]; P3MC SME 2 [25%] | 32h | 2,000 |
| 14 | 2.1.11 | OUTCOME: Resource list complete for Sign Off | milestone | 0d | 2024-11-18 | 2024-11-18 | 13 |  | 1d | 0d | Client Sponsor |  |  |
| 15 | 2.1.12 | Determine initial attendees for governance board(s) |  | 0.95d | 2024-11-18 | 2024-11-19 | 14 |  | 1d | 0d | P3MC SME 1 [25%]; P3MC SME 2 [25%]; P3MC SME3 [25%]; P3MC SME4 [25%] | 8h | 500 |
| 16 | 2.1.13 | OUTCOME: Key vacancies list (hiring needs) for Sign Off | milestone | 0d | 2024-11-19 | 2024-11-19 | 15 |  | 1d |  | Client Sponsor |  |  |
| 17 | 2.2 | **Process** |  | 18.05d | 2024-10-21 | 2024-11-14 |  |  | 0d |  |  | 208h | 13,000 |
| 18 | 2.2.1 | Undertake process prioritisation for deployment |  | 9.5d | 2024-10-21 | 2024-11-01 | 1 |  | 0d |  | P3MC SME3 [25%]; P3MC SME4 [25%]; P3MC SME 1 [25%]; P3MC SME 2 [25%] | 80h | 5,000 |
| 19 | 2.2.2 | OUTCOME: Tailored process vision DRAFT for Review | milestone | 0d | 2024-10-30 | 2024-10-30 | 18FS-2d |  | 7.7d | 2d | Client Sponsor |  |  |
| 20 | 2.2.3 | OUTCOME: Tailored process vision FINAL for Sign Off | milestone | 0d | 2024-11-01 | 2024-11-01 | 18, 19 |  | 5.7d | 0d | Client Sponsor |  |  |
| 21 | 2.2.4 | Agree process tolerances timings thresholds and permissions |  | 7.6d | 2024-11-01 | 2024-11-13 | 20 |  | 5.7d | 0d | P3MC SME 1 [25%]; P3MC SME4 [25%]; P3MC SME 2 [25%]; P3MC SME3 [25%] | 56h | 3,500 |
| 22 | 2.2.5 | OUTCOME: Quick wins (fast to agree fast to deploy process i.e. risk) FINAL for Sign Off | milestone | 0d | 2024-11-13 | 2024-11-13 | 21 |  | 5.7d |  | Client Sponsor |  |  |
| 23 | 2.2.6 | Establish and baseline WBS |  | 4.75d | 2024-11-01 | 2024-11-08 | 18 |  | 0d |  | P3MC SME 2 [25%]; P3MC SME 1 [25%]; P3MC SME3 [25%]; P3MC SME4 [25%] | 40h | 2,500 |
| 24 | 2.2.7 | OUTCOME: Intermediate process priority list FINAL for Sign Off | milestone | 0d | 2024-11-08 | 2024-11-08 | 23 |  | 8.55d |  | Client Sponsor |  |  |
| 25 | 2.2.8 | Introduce process standardisation |  | 3.8d | 2024-11-08 | 2024-11-14 | 23 |  | 0d |  | P3MC SME4 [25%]; P3MC SME 1 [25%]; P3MC SME 2 [25%]; P3MC SME3 [25%] | 32h | 2,000 |
| 26 | 2.2.9 | OUTCOME: Introduction of standardised processes Signed Off | milestone | 0d | 2024-11-14 | 2024-11-14 | 25 |  | 0d |  | Client Sponsor |  |  |

| ID | WBS | Task | Type | Duration | Start | Finish | Predecessors | Total slack | Free slack | Resources | Work | Cost |
| --- | --- | --- | --- | --- | --- | --- | --- | --- | --- | --- | --- | --- |
| 27 | 2.3 | **Tools** |  | 8.55d | 2024-10-21 | 2024-10-31 |  | 14.25d |  |  | 72h | 4,500 |
| 28 | 2.3.1 | SWOT analysis of available tools |  | 2.85d | 2024-10-21 | 2024-10-23 | 1 | 14.25d | 0d | P3MC SME 1 [25%]; P3MC SME 2 [25%]; P3MC SME3 [25%]; P3MC SME4 [25%] | 24h | 1,500 |
| 29 | 2.3.2 | OUTCOME: Proposed tooling approach FINAL for Sign Off | milestone | 0d | 2024-10-23 | 2024-10-23 | 28 | 19.95d |  | Client Sponsor |  |  |
| 30 | 2.3.3 | Determine tooling for automation |  | 2.85d | 2024-10-23 | 2024-10-28 | 28 | 14.25d | 0d | P3MC SME4 [25%]; P3MC SME 1 [25%]; P3MC SME 2 [25%]; P3MC SME3 [25%] | 24h | 1,500 |
| 31 | 2.3.4 | OUTCOME: Request for tools / revisions to permission levels Signed Off | milestone | 0d | 2024-10-28 | 2024-10-28 | 30 | 14.25d | 0d | Client Sponsor |  |  |
| 32 | 2.3.5 | Determine technology orientation |  | 2.85d | 2024-10-28 | 2024-10-31 | 31 | 14.25d | 0d | P3MC SME 1 [25%]; P3MC SME 2 [25%]; P3MC SME3 [25%]; P3MC SME4 [25%] | 24h | 1,500 |
| 33 | 2.3.6 | OUTCOME: Introduction and initial configuration of standardised tools Signed Off | milestone | 0d | 2024-10-31 | 2024-10-31 | 32 | 14.25d |  | Client Sponsor |  |  |
| 34 | 2.4 | **PMO** |  | 22.8d | 2024-10-21 | 2024-11-20 |  | 0d |  |  | 208h | 13,000 |
| 35 | 2.4.1 | Undertake assessment & Quality Assurance review |  | 4.75d | 2024-10-21 | 2024-10-25 | 1 | 0d |  | P3MC SME 1 [25%]; P3MC SME 2 [25%]; P3MC SME3 [25%]; P3MC SME4 [25%] | 40h | 2,500 |
| 36 | 2.4.2 | OUTCOME: PMO Maturity Assessment Signed Off | milestone | 0d | 2024-10-25 | 2024-10-25 | 35 | 0d |  | Client Sponsor |  |  |
| 37 | 2.4.3 | Develop the PMO Charter |  | 4.75d | 2024-10-25 | 2024-11-01 | 36 | 0d |  | P3MC SME 2 [25%]; P3MC SME 1 [25%]; P3MC SME3 [25%]; P3MC SME4 [25%] | 40h | 2,500 |
| 38 | 2.4.4 | OUTCOME: Tailored PMO Scope Signed Off | milestone | 0d | 2024-11-01 | 2024-11-01 | 37 | 0d |  | Client Sponsor |  |  |
| 39 | 2.4.5 | Specify metrics and agree qualitative indicators with sponsorship |  | 4.75d | 2024-11-01 | 2024-11-08 | 38 | 0d |  | P3MC SME3 [25%]; P3MC SME 1 [25%]; P3MC SME 2 [25%]; P3MC SME4 [25%] | 40h | 2,500 |
| 40 | 2.4.6 | OUTCOME: PMO Delivery Plan Signed Off | milestone | 0d | 2024-11-08 | 2024-11-08 | 39 | 0d |  | Client Sponsor |  |  |
| 41 | 2.4.7 | Define performance metrics |  | 4.75d | 2024-11-08 | 2024-11-14 | 40 | 0d |  | P3MC SME4 [25%]; P3MC SME 1 [25%]; P3MC SME 2 [25%]; P3MC SME3 [25%] | 40h | 2,500 |
| 42 | 2.4.8 | OUTCOME: PMO KPIs Signed Off | milestone | 0d | 2024-11-14 | 2024-11-14 | 41 | 0d |  | Client Sponsor |  |  |
| 43 | 2.4.9 | Review of any available training materials |  | 1.9d | 2024-11-08 | 2024-11-12 | 40 | 6.65d | 0d | P3MC SME 1 [25%]; P3MC SME 2 [25%]; P3MC SME3 [25%]; P3MC SME4 [25%] | 16h | 1,000 |
| 44 | 2.4.10 | OUTCOME: Training Gap Analysis Signed Off | milestone | 0d | 2024-11-12 | 2024-11-12 | 43 | 6.65d |  | Client Sponsor |  |  |
| 45 | 2.4.11 | Design fit for purpose Governance model |  | 3.8d | 2024-11-15 | 2024-11-20 | 40, 42 | 0d |  | P3MC SME 2 [25%]; P3MC SME 1 [25%]; P3MC SME3 [25%]; P3MC SME4 [25%] | 32h | 2,000 |
| 46 | 2.4.12 | OUTCOME: Governance Model Signed Off | milestone | 0d | 2024-11-20 | 2024-11-20 | 45 | 0d |  | Client Sponsor |  |  |
| 47 | 3 | P3MC 60 Day Plan Start | milestone | 0d | 2024-11-20 | 2024-11-20 | 6, 9, 12, 14, 16, 20, 22, 24, 29, 31, 33, 36, 40, 42, 44, 46 | 0d |  |  |  |  |
| 48 | 4 | **P3MC 31-60 Day Plan** |  | 22.8d | 2024-11-20 | 2024-12-23 |  | 0d |  |  | 680h | 42,500 |
| 49 | 4.1 | **People** |  | 21.8d | 2024-11-20 | 2024-12-20 |  | 0d |  |  | 192h | 12,000 |
| 50 | 4.1.1 | Engage Key Sponsors & Stakeholders |  | 9.5d | 2024-11-20 | 2024-12-04 | 47 | 0d |  | P3MC SME 1 [25%]; P3MC SME 2 [25%]; P3MC SME3 [25%]; P3MC SME4 [25%] | 80h | 5,000 |
| 51 | 4.1.2 | OUTCOME: Stakeholder expectations & relationship map first Draft for Review | milestone | 0d | 2024-11-27 | 2024-11-27 | 50FS-5d | 0d |  | Client Sponsor |  |  |
| 52 | 4.1.3 | OUTCOME: Stakeholder expectations & relationship map FINAL Version Sign Off | milestone | 0d | 2024-12-04 | 2024-12-04 | 50 | 0d |  | Client Sponsor |  |  |
| 53 | 4.1.4 | Analyse team roles and value contribution |  | 4.75d | 2024-12-04 | 2024-12-11 | 52 | 0d |  | P3MC SME3 [25%]; P3MC SME4 [25%]; P3MC SME 1 [25%]; P3MC SME 2 [25%] | 40h | 2,500 |
| 54 | 4.1.5 | OUTCOME:Engagement organisation design & structure First DRAFT for Review | milestone | 0d | 2024-12-09 | 2024-12-09 | 53FS-2d | 0d |  | Client Sponsor |  |  |
| 55 | 4.1.6 | OUTCOME:Engagement organisation design & structure FINAL Version for Sign Off | milestone | 0d | 2024-12-09 | 2024-12-09 | 52, 54 | 0d |  | Client Sponsor |  |  |
| 56 | 4.1.7 | Understand perceived pain points & decision making maturity |  | 3.8d | 2024-12-11 | 2024-12-16 | 53 | 0d |  | P3MC SME 1 [25%]; P3MC SME3 [25%]; P3MC SME4 [25%]; P3MC SME 2 [25%] | 32h | 2,000 |
| 57 | 4.1.8 | OUTCOME: PMO structure aligned to org structure DRAFT for Review | milestone | 0d | 2024-12-13 | 2024-12-13 | 56FS-1d | 0d |  | Client Sponsor |  |  |
| 58 | 4.1.9 | OUTCOME: PMO structure aligned to org structure FINAL Version for Sign Off | milestone | 0d | 2024-12-13 | 2024-12-13 | 53, 57 | 0d |  | Client Sponsor |  |  |
| 59 | 4.1.10 | Initiate functional relationships within the engagement team (PMs SMEs etc.) |  | 3.8d | 2024-12-13 | 2024-12-19 | 58 | 0d |  | P3MC SME3 [25%]; P3MC SME4 [25%]; P3MC SME 1 [25%]; P3MC SME 2 [25%] | 32h | 2,000 |
| 60 | 4.1.11 | OUTCOME: Resource list complete for Sign Off | milestone | 0d | 2024-12-19 | 2024-12-19 | 59 | 0d |  | Client Sponsor |  |  |
| 61 | 4.1.12 | Determine initial attendees for governance board(s) |  | 0.95d | 2024-12-19 | 2024-12-20 | 60 | 0d |  | P3MC SME 1 [25%]; P3MC SME 2 [25%]; P3MC SME3 [25%]; P3MC SME4 [25%] | 8h | 500 |
| 62 | 4.1.13 | OUTCOME: Key vacancies list (hiring needs) for Sign Off | milestone | 0d | 2024-12-20 | 2024-12-20 | 61 | 0d |  | Client Sponsor |  |  |

| ID | WBS | Task | Type | Duration | Start | Finish | Predecessors | Total slack | Resources | Work | Cost |
| --- | --- | --- | --- | --- | --- | --- | --- | --- | --- | --- | --- |
| 63 | 4.2 | **Process** |  | 18.05d | 2024-11-20 | 2024-12-16 |  | 0d |  | 208h | 13,000 |
| 64 | 4.2.1 | Undertake process prioritisation for deployment |  | 9.5d | 2024-11-20 | 2024-12-04 | 47 | 0d | P3MC SME3 [25%]; P3MC SME4 [25%]; P3MC SME 1 [25%]; P3MC SME 2 [25%] | 80h | 5,000 |
| 65 | 4.2.2 | OUTCOME: Tailored process vision DRAFT for Review | milestone | 0d | 2024-12-02 | 2024-12-02 | 64FS-2d | 2d | Client Sponsor |  |  |
| 66 | 4.2.3 | OUTCOME: Tailored process vision FINAL for Sign Off | milestone | 0d | 2024-12-04 | 2024-12-04 | 64, 65 | 0d | Client Sponsor |  |  |
| 67 | 4.2.4 | Agree process tolerances timings thresholds and permissions |  | 7.6d | 2024-12-04 | 2024-12-13 | 66 | 0d | P3MC SME 1 [25%]; P3MC SME4 [25%]; P3MC SME 2 [25%]; P3MC SME3 [25%] | 56h | 3,500 |
| 68 | 4.2.5 | OUTCOME: Quick wins (fast to agree fast to deploy process i.e. risk) FINAL for Sign Off | milestone | 0d | 2024-12-13 | 2024-12-13 | 67 | 0d | Client Sponsor |  |  |
| 69 | 4.2.6 | Establish and baseline WBS |  | 4.75d | 2024-12-04 | 2024-12-11 | 64 | 0d | P3MC SME 2 [25%]; P3MC SME 1 [25%]; P3MC SME3 [25%]; P3MC SME4 [25%] | 40h | 2,500 |
| 70 | 4.2.7 | OUTCOME: Intermediate process priority list FINAL for Sign Off | milestone | 0d | 2024-12-11 | 2024-12-11 | 69 | 0d | Client Sponsor |  |  |
| 71 | 4.2.8 | Introduce process standardisation |  | 3.8d | 2024-12-11 | 2024-12-16 | 69 | 0d | P3MC SME4 [25%]; P3MC SME 1 [25%]; P3MC SME 2 [25%]; P3MC SME3 [25%] | 32h | 2,000 |
| 72 | 4.2.9 | OUTCOME: Introduction of standardised processes Signed Off | milestone | 0d | 2024-12-16 | 2024-12-16 | 71 | 0d | Client Sponsor |  |  |
| 73 | 4.3 | **Tools** |  | 8.55d | 2024-11-20 | 2024-12-03 |  | 0d |  | 72h | 4,500 |
| 74 | 4.3.1 | SWOT analysis of available tools |  | 2.85d | 2024-11-20 | 2024-11-25 | 47 | 0d | P3MC SME 1 [25%]; P3MC SME 2 [25%]; P3MC SME3 [25%]; P3MC SME4 [25%] | 24h | 1,500 |
| 75 | 4.3.2 | OUTCOME: Proposed tooling approach FINAL for Sign Off | milestone | 0d | 2024-11-25 | 2024-11-25 | 74 | 0d | Client Sponsor |  |  |
| 76 | 4.3.3 | Determine tooling for automation |  | 2.85d | 2024-11-25 | 2024-11-28 | 74 | 0d | P3MC SME4 [25%]; P3MC SME 1 [25%]; P3MC SME 2 [25%]; P3MC SME3 [25%] | 24h | 1,500 |
| 77 | 4.3.4 | OUTCOME: Request for tools / revisions to permission levels Signed Off | milestone | 0d | 2024-11-28 | 2024-11-28 | 76 | 0d | Client Sponsor |  |  |
| 78 | 4.3.5 | Determine technology orientation |  | 2.85d | 2024-11-28 | 2024-12-03 | 77 | 0d | P3MC SME 1 [25%]; P3MC SME 2 [25%]; P3MC SME3 [25%]; P3MC SME4 [25%] | 24h | 1,500 |
| 79 | 4.3.6 | OUTCOME: Introduction and initial configuration of standardised tools Signed Off | milestone | 0d | 2024-12-03 | 2024-12-03 | 78 | 0d | Client Sponsor |  |  |
| 80 | 4.4 | **PMO** |  | 22.8d | 2024-11-20 | 2024-12-23 |  | 0d |  | 208h | 13,000 |
| 81 | 4.4.1 | Undertake assessment & Quality Assurance review |  | 4.75d | 2024-11-20 | 2024-11-27 | 47 | 0d | P3MC SME 1 [25%]; P3MC SME 2 [25%]; P3MC SME3 [25%]; P3MC SME4 [25%] | 40h | 2,500 |
| 82 | 4.4.2 | OUTCOME: PMO Maturity Assessment Signed Off | milestone | 0d | 2024-11-27 | 2024-11-27 | 81 | 0d | Client Sponsor |  |  |
| 83 | 4.4.3 | Develop the PMO Charter |  | 4.75d | 2024-11-27 | 2024-12-04 | 82 | 0d | P3MC SME 2 [25%]; P3MC SME 1 [25%]; P3MC SME3 [25%]; P3MC SME4 [25%] | 40h | 2,500 |
| 84 | 4.4.4 | OUTCOME: Tailored PMO Scope Signed Off | milestone | 0d | 2024-12-04 | 2024-12-04 | 83 | 0d | Client Sponsor |  |  |
| 85 | 4.4.5 | Specify metrics and agree qualitative indicators with sponsorship |  | 4.75d | 2024-12-04 | 2024-12-11 | 84 | 0d | P3MC SME3 [25%]; P3MC SME 1 [25%]; P3MC SME 2 [25%]; P3MC SME4 [25%] | 40h | 2,500 |
| 86 | 4.4.6 | OUTCOME: PMO Delivery Plan Signed Off | milestone | 0d | 2024-12-11 | 2024-12-11 | 85 | 0d | Client Sponsor |  |  |
| 87 | 4.4.7 | Define performance metrics |  | 4.75d | 2024-12-11 | 2024-12-17 | 86 | 0d | P3MC SME4 [25%]; P3MC SME 1 [25%]; P3MC SME 2 [25%]; P3MC SME3 [25%] | 40h | 2,500 |
| 88 | 4.4.8 | OUTCOME: PMO KPIs Signed Off | milestone | 0d | 2024-12-17 | 2024-12-17 | 87 | 0d | Client Sponsor |  |  |
| 89 | 4.4.9 | Review of any available training materials |  | 1.9d | 2024-12-11 | 2024-12-12 | 86 | 0d | P3MC SME 1 [25%]; P3MC SME 2 [25%]; P3MC SME3 [25%]; P3MC SME4 [25%] | 16h | 1,000 |
| 90 | 4.4.10 | OUTCOME: Training Gap Analysis Signed Off | milestone | 0d | 2024-12-12 | 2024-12-12 | 89 | 0d | Client Sponsor |  |  |
| 91 | 4.4.11 | Design fit for purpose Governance model |  | 3.8d | 2024-12-17 | 2024-12-23 | 86, 88 | 0d | P3MC SME 2 [25%]; P3MC SME 1 [25%]; P3MC SME3 [25%]; P3MC SME4 [25%] | 32h | 2,000 |
| 92 | 4.4.12 | OUTCOME: Governance Model Signed Off | milestone | 0d | 2024-12-23 | 2024-12-23 | 91 | 0d | Client Sponsor |  |  |
| 93 | 5 | P3MC 61-90 Pan Start | milestone | 0d | 2024-12-23 | 2024-12-23 | 92 | 0d |  |  |  |

| ID | WBS | Task | Type | Duration | Start | Finish | Predecessors | Total slack | Resources | Work | Cost |
| --- | --- | --- | --- | --- | --- | --- | --- | --- | --- | --- | --- |
| 94 | 6 | **P3MC 61-90 Day Plan** |  | 22.8d | 2024-12-23 | 2025-01-23 |  | 0d |  | 680h | 42,500 |
| 95 | 6.1 | **People** |  | 21.8d | 2024-12-23 | 2025-01-22 |  | 0d |  | 192h | 12,000 |
| 96 | 6.1.1 | Engage Key Sponsors & Stakeholders |  | 9.5d | 2024-12-23 | 2025-01-06 | 93 | 0d | P3MC SME 1 [25%]; P3MC SME 2 [25%]; P3MC SME3 [25%]; P3MC SME4 [25%] | 80h | 5,000 |
| 97 | 6.1.2 | OUTCOME: Stakeholder expectations & relationship map first Draft for Review | milestone | 0d | 2024-12-30 | 2024-12-30 | 96FS-5d | 0d | Client Sponsor |  |  |
| 98 | 6.1.3 | OUTCOME: Stakeholder expectations & relationship map FINAL Version Sign Off | milestone | 0d | 2025-01-06 | 2025-01-06 | 96 | 0d | Client Sponsor |  |  |
| 99 | 6.1.4 | Analyse team roles and value contribution |  | 4.75d | 2025-01-06 | 2025-01-10 | 98 | 0d | P3MC SME3 [25%]; P3MC SME4 [25%]; P3MC SME 1 [25%]; P3MC SME 2 [25%] | 40h | 2,500 |
| 100 | 6.1.5 | OUTCOME:Engagement organisation design & structure First DRAFT for Review | milestone | 0d | 2025-01-08 | 2025-01-08 | 99FS-2d | 0d | Client Sponsor |  |  |
| 101 | 6.1.6 | OUTCOME:Engagement organisation design & structure FINAL Version for Sign Off | milestone | 0d | 2025-01-08 | 2025-01-08 | 98, 100 | 0d | Client Sponsor |  |  |
| 102 | 6.1.7 | Understand perceived pain points & decision making maturity |  | 3.8d | 2025-01-10 | 2025-01-16 | 99 | 0d | P3MC SME 1 [25%]; P3MC SME3 [25%]; P3MC SME4 [25%]; P3MC SME 2 [25%] | 32h | 2,000 |
| 103 | 6.1.8 | OUTCOME: PMO structure aligned to org structure DRAFT for Review | milestone | 0d | 2025-01-15 | 2025-01-15 | 102FS-1d | 0d | Client Sponsor |  |  |
| 104 | 6.1.9 | OUTCOME: PMO structure aligned to org structure FINAL Version for Sign Off | milestone | 0d | 2025-01-15 | 2025-01-15 | 99, 103 | 0d | Client Sponsor |  |  |
| 105 | 6.1.10 | Initiate functional relationships within the engagement team (PMs SMEs etc.) |  | 3.8d | 2025-01-15 | 2025-01-21 | 104 | 0d | P3MC SME3 [25%]; P3MC SME4 [25%]; P3MC SME 1 [25%]; P3MC SME 2 [25%] | 32h | 2,000 |
| 106 | 6.1.11 | OUTCOME: Resource list complete for Sign Off | milestone | 0d | 2025-01-21 | 2025-01-21 | 105 | 0d | Client Sponsor |  |  |
| 107 | 6.1.12 | Determine initial attendees for governance board(s) |  | 0.95d | 2025-01-21 | 2025-01-22 | 106 | 0d | P3MC SME 1 [25%]; P3MC SME 2 [25%]; P3MC SME3 [25%]; P3MC SME4 [25%] | 8h | 500 |
| 108 | 6.1.13 | OUTCOME: Key vacancies list (hiring needs) for Sign Off | milestone | 0d | 2025-01-22 | 2025-01-22 | 107 | 0d | Client Sponsor |  |  |
| 109 | 6.2 | **Process** |  | 18.05d | 2024-12-23 | 2025-01-16 |  | 0d |  | 208h | 13,000 |
| 110 | 6.2.1 | Undertake process prioritisation for deployment |  | 9.5d | 2024-12-23 | 2025-01-06 | 93 | 0d | P3MC SME3 [25%]; P3MC SME4 [25%]; P3MC SME 1 [25%]; P3MC SME 2 [25%] | 80h | 5,000 |
| 111 | 6.2.2 | OUTCOME: Tailored process vision DRAFT for Review | milestone | 0d | 2025-01-02 | 2025-01-02 | 110FS-2d | 2d | Client Sponsor |  |  |
| 112 | 6.2.3 | OUTCOME: Tailored process vision FINAL for Sign Off | milestone | 0d | 2025-01-06 | 2025-01-06 | 110, 111 | 0d | Client Sponsor |  |  |
| 113 | 6.2.4 | Agree process tolerances timings thresholds and permissions |  | 7.6d | 2025-01-06 | 2025-01-15 | 112 | 0d | P3MC SME 1 [25%]; P3MC SME4 [25%]; P3MC SME 2 [25%]; P3MC SME3 [25%] | 56h | 3,500 |
| 114 | 6.2.5 | OUTCOME: Quick wins (fast to agree fast to deploy process i.e. risk) FINAL for Sign Off | milestone | 0d | 2025-01-15 | 2025-01-15 | 113 | 0d | Client Sponsor |  |  |
| 115 | 6.2.6 | Establish and baseline WBS |  | 4.75d | 2025-01-06 | 2025-01-10 | 110 | 0d | P3MC SME 2 [25%]; P3MC SME 1 [25%]; P3MC SME3 [25%]; P3MC SME4 [25%] | 40h | 2,500 |
| 116 | 6.2.7 | OUTCOME: Intermediate process priority list FINAL for Sign Off | milestone | 0d | 2025-01-10 | 2025-01-10 | 115 | 0d | Client Sponsor |  |  |
| 117 | 6.2.8 | Introduce process standardisation |  | 3.8d | 2025-01-10 | 2025-01-16 | 115 | 0d | P3MC SME4 [25%]; P3MC SME 1 [25%]; P3MC SME 2 [25%]; P3MC SME3 [25%] | 32h | 2,000 |
| 118 | 6.2.9 | OUTCOME: Introduction of standardised processes Signed Off | milestone | 0d | 2025-01-16 | 2025-01-16 | 117 | 0d | Client Sponsor |  |  |

| ID | WBS | Task | Type | Duration | Start | Finish | Predecessors | Total slack | Resources | Work | Cost |
| --- | --- | --- | --- | --- | --- | --- | --- | --- | --- | --- | --- |
| 119 | 6.3 | **Tools** |  | 8.55d | 2024-12-23 | 2025-01-03 |  | 0d |  | 72h | 4,500 |
| 120 | 6.3.1 | SWOT analysis of available tools |  | 2.85d | 2024-12-23 | 2024-12-26 | 93 | 0d | P3MC SME 1 [25%]; P3MC SME 2 [25%]; P3MC SME3 [25%]; P3MC SME4 [25%] | 24h | 1,500 |
| 121 | 6.3.2 | OUTCOME: Proposed tooling approach FINAL for Sign Off | milestone | 0d | 2024-12-26 | 2024-12-26 | 120 | 0d | Client Sponsor |  |  |
| 122 | 6.3.3 | Determine tooling for automation |  | 2.85d | 2024-12-26 | 2024-12-31 | 120 | 0d | P3MC SME4 [25%]; P3MC SME 1 [25%]; P3MC SME 2 [25%]; P3MC SME3 [25%] | 24h | 1,500 |
| 123 | 6.3.4 | OUTCOME: Request for tools / revisions to permission levels Signed Off | milestone | 0d | 2024-12-31 | 2024-12-31 | 122 | 0d | Client Sponsor |  |  |
| 124 | 6.3.5 | Determine technology orientation |  | 2.85d | 2024-12-31 | 2025-01-03 | 123 | 0d | P3MC SME 1 [25%]; P3MC SME 2 [25%]; P3MC SME3 [25%]; P3MC SME4 [25%] | 24h | 1,500 |
| 125 | 6.3.6 | OUTCOME: Introduction and initial configuration of standardised tools Signed Off | milestone | 0d | 2025-01-03 | 2025-01-03 | 124 | 0d | Client Sponsor |  |  |
| 126 | 6.4 | **PMO** |  | 22.8d | 2024-12-23 | 2025-01-23 |  | 0d |  | 208h | 13,000 |
| 127 | 6.4.1 | Undertake assessment & Quality Assurance review |  | 4.75d | 2024-12-23 | 2024-12-30 | 93 | 0d | P3MC SME 1 [25%]; P3MC SME 2 [25%]; P3MC SME3 [25%]; P3MC SME4 [25%] | 40h | 2,500 |
| 128 | 6.4.2 | OUTCOME: PMO Maturity Assessment Signed Off | milestone | 0d | 2024-12-30 | 2024-12-30 | 127 | 0d | Client Sponsor |  |  |
| 129 | 6.4.3 | Develop the PMO Charter |  | 4.75d | 2024-12-30 | 2025-01-06 | 128 | 0d | P3MC SME 2 [25%]; P3MC SME 1 [25%]; P3MC SME3 [25%]; P3MC SME4 [25%] | 40h | 2,500 |
| 130 | 6.4.4 | OUTCOME: Tailored PMO Scope Signed Off | milestone | 0d | 2025-01-06 | 2025-01-06 | 129 | 0d | Client Sponsor |  |  |
| 131 | 6.4.5 | Specify metrics and agree qualitative indicators with sponsorship |  | 4.75d | 2025-01-06 | 2025-01-10 | 130 | 0d | P3MC SME3 [25%]; P3MC SME 1 [25%]; P3MC SME 2 [25%]; P3MC SME4 [25%] | 40h | 2,500 |
| 132 | 6.4.6 | OUTCOME: PMO Delivery Plan Signed Off | milestone | 0d | 2025-01-10 | 2025-01-10 | 131 | 0d | Client Sponsor |  |  |
| 133 | 6.4.7 | Define performance metrics |  | 4.75d | 2025-01-10 | 2025-01-17 | 132 | 0d | P3MC SME4 [25%]; P3MC SME 1 [25%]; P3MC SME 2 [25%]; P3MC SME3 [25%] | 40h | 2,500 |
| 134 | 6.4.8 | OUTCOME: PMO KPIs Signed Off | milestone | 0d | 2025-01-17 | 2025-01-17 | 133 | 0d | Client Sponsor |  |  |
| 135 | 6.4.9 | Review of any available training materials |  | 1.9d | 2025-01-10 | 2025-01-14 | 132 | 0d | P3MC SME 1 [25%]; P3MC SME 2 [25%]; P3MC SME3 [25%]; P3MC SME4 [25%] | 16h | 1,000 |
| 136 | 6.4.10 | OUTCOME: Training Gap Analysis Signed Off | milestone | 0d | 2025-01-14 | 2025-01-14 | 135 | 0d | Client Sponsor |  |  |
| 137 | 6.4.11 | Design fit for purpose Governance model |  | 3.8d | 2025-01-17 | 2025-01-23 | 132, 134 | 0d | P3MC SME 2 [25%]; P3MC SME 1 [25%]; P3MC SME3 [25%]; P3MC SME4 [25%] | 32h | 2,000 |
| 138 | 6.4.12 | OUTCOME: Governance Model Signed Off | milestone | 0d | 2025-01-23 | 2025-01-23 | 137 | 0d | Client Sponsor |  |  |
